# PERT

Schedule from MS Project, 2026-03-02 to 2026-04-21.

## Calendars

- Стандартный: Mon-Fri 09:00-13:00, 14:00-18:00; Sat-Sun off.

## Resources

| Resource |
| --- |
| Трохан Андрей Максимович |
| Новиков Артем Андреевич |
| Яковенко Илья Александрович |

## Schedule

| ID | WBS | Task | Duration | Start | Finish | Predecessors | Total slack | Free slack | Resources | Work |
| --- | --- | --- | --- | --- | --- | --- | --- | --- | --- | --- |
| 1 | 1 | **Весь проект** | 37d | 2026-03-02 | 2026-04-21 |  | 0d |  |  | 546h |
| 2 | 1.1 | **Проектирование и подготовка проекта** | 12d | 2026-03-02 | 2026-03-17 |  | 0d |  |  | 146h |
| 3 | 1.1.1 | Анализ требований и утверждение ТЗ | 2d | 2026-03-02 | 2026-03-03 |  | 0d |  | Яковенко Илья Александрович; Новиков Артем Андреевич; Трохан Андрей Максимович | 48h |
| 4 | 1.1.2 | Проектирование архитектуры БД | 2d | 2026-03-04 | 2026-03-05 | 3 | 0d |  | Новиков Артем Андреевич; Трохан Андрей Максимович | 32h |
| 5 | 1.1.3 | Проектирование API (Ktor, маршруты, JWT) | 3d | 2026-03-06 | 2026-03-10 | 4 | 0d |  | Новиков Артем Андреевич; Яковенко Илья Александрович | 42h |
| 6 | 1.1.4 | Проектирование UI/UX (макеты экранов) | 4d | 2026-03-04 | 2026-03-09 | 3 | 1d |  | Новиков Артем Андреевич | 8h |
| 7 | 1.1.5 | Настройка репозиториев, CI/CD | 5d | 2026-03-11 | 2026-03-17 | 5, 6 | 0d |  | Трохан Андрей Максимович; Яковенко Илья Александрович | 16h |
| 8 | 1.2 | **Разработка Серверной части** | 11d | 2026-03-13 | 2026-03-27 | 7SS+2d | 0d |  |  | 160h |
| 9 | 1.2.1 | Разработка моделей данных | 3d | 2026-03-13 | 2026-03-17 |  | 0d |  | Яковенко Илья Александрович | 16h |
| 10 | 1.2.2 | Реализация модуля аутентификации | 4d | 2026-03-13 | 2026-03-18 | 9SS | 0d |  | Новиков Артем Андреевич; Трохан Андрей Максимович | 48h |
| 11 | 1.2.3 | Разработка CRUD для справочников | 3d | 2026-03-19 | 2026-03-23 | 10 | 0d |  | Яковенко Илья Александрович | 24h |
| 12 | 1.2.4 | Разработка логики для библиотекаря | 6d | 2026-03-19 | 2026-03-26 | 10 | 18d |  | Трохан Андрей Максимович | 32h |
| 13 | 1.2.5 | Разработка поискового механизма | 6d | 2026-03-20 | 2026-03-27 | 10FS+1d | 2d | 0d | Новиков Артем Андреевич | 40h |
| 14 | 1.3 | **Разработка Клиентской части** | 13d | 2026-03-27 | 2026-04-14 | 6, 11FS+3d | 0d |  |  | 168h |
| 15 | 1.3.1 | Создание основы проекта (навигация, темы, DI) | 2d | 2026-03-27 | 2026-03-30 |  | 0d |  | Яковенко Илья Александрович | 16h |
| 16 | 1.3.2 | Реализация сетевого слоя (Ktor Client, модели ответов, токены) | 3d | 2026-04-01 | 2026-04-03 | 15FS+1d | 0d |  | Трохан Андрей Максимович; Новиков Артем Андреевич | 48h |
| 17 | 1.3.3 | Реализация экранов гостя/читателя | 3d | 2026-04-06 | 2026-04-08 | 16 | 0d |  | Трохан Андрей Максимович | 24h |
| 18 | 1.3.4 | Реализация личного кабинета читателя | 3d | 2026-04-06 | 2026-04-08 | 16 | 0d |  | Новиков Артем Андреевич | 24h |
| 19 | 1.3.5 | Реализация панели библиотекаря | 3d | 2026-04-06 | 2026-04-08 | 16 | 0d |  | Яковенко Илья Александрович | 24h |
| 20 | 1.3.6 | Реализация панели модератора | 4d | 2026-04-09 | 2026-04-14 | 17, 18, 19 | 0d |  | Новиков Артем Андреевич; Яковенко Илья Александрович | 32h |
| 21 | 1.4 | **Тестирование и Развертывание** | 10d | 2026-04-08 | 2026-04-21 |  | 0d |  |  | 72h |
| 22 | 1.4.1 | Интеграционное тестирование | 2d | 2026-04-08 | 2026-04-09 | 13FS+7d | 2d | 0d | Новиков Артем Андреевич | 8h |
| 23 | 1.4.2 | Комплексное тестирование клиентского приложения | 4d | 2026-04-15 | 2026-04-20 | 20 | 0d |  | Яковенко Илья Александрович | 32h |
| 24 | 1.4.3 | Деплой серверной части | 5d | 2026-04-10 | 2026-04-16 | 22 | 2d |  | Трохан Андрей Максимович | 8h |
| 25 | 1.4.4 | Подготовка APK | 1d | 2026-04-21 | 2026-04-21 | 24, 23 | 0d |  | Новиков Артем Андреевич; Трохан Андрей Максимович; Яковенко Илья Александрович | 24h |
